# Cronograma Controle Financeiro Facilitado

Schedule from MS Project, 2018-11-01 to 2019-02-15, costs in R$, A marks actual dates.

## Calendars

- Standard: Mon-Fri 08:00-12:00, 13:00-17:00; Sat-Sun off.

## Resources

| Resource | Cost per use |
| --- | --- |
| Ian | 70 |
| Ruan | 70 |
| Victor | 70 |
| Vinicius | 70 |

## Schedule

| ID | WBS | Task | Duration | Start | Finish | Predecessors | Complete | Remaining | Baseline start | Baseline finish | Baseline duration | Constraint | Resources | Work | Actual work | Cost | Baseline cost | Actual cost |
| --- | --- | --- | --- | --- | --- | --- | --- | --- | --- | --- | --- | --- | --- | --- | --- | --- | --- | --- |
| 1 | 1 | **Sistema de Gestão para Associação de Catadores** | 76.19d | 2018-11-01 08:00 A | 2019-02-15 09:30 |  | 35% | 49.61d | 2018-11-01 08:00 | 2019-02-28 12:00 | 86.5d |  |  | 323.48h | 112.05h | 5,740 | 6,900 | 3,220 |
| 2 | 1.1 | **Prospecção** | 6.56d | 2018-11-01 08:00 A | 2018-11-09 13:30 A |  | 100% |  | 2018-10-31 08:00 | 2018-11-08 10:30 | 6.31d |  |  | 32.35h | 32.35h | 840 | 1,080 | 840 |
| 3 | 1.1.1 | **Ptec** | 4.12d | 2018-11-01 08:00 A | 2018-11-07 09:00 A |  | 100% |  | 2018-10-31 08:00 | 2018-11-06 09:00 | 4.12d |  |  | 20.35h | 20.35h | 560 | 750 | 560 |
| 4 | 1.1.1.1 | Estudar Domínio de Aplicação | 1d | 2018-11-01 08:00 A | 2018-11-01 17:00 A |  | 100% |  | 2018-10-31 08:00 | 2018-10-31 17:00 | 1d |  | Ruan; Ian | 9h | 9h | 140 | 140 | 140 |
| 5 | 1.1.1.2 | Reunião com o Fornecedor de Requisitos | 1d | 2018-11-02 08:00 A | 2018-11-02 17:00 A | 4 | 100% |  | 2018-11-01 08:00 | 2018-11-01 17:00 | 1d |  | Ian; Ruan; Victor; Vinicius | 1.6h | 1.6h | 280 | 350 | 280 |
| 6 | 1.1.1.3 | Redigir PTEC | 1d | 2018-11-05 08:00 A | 2018-11-05 17:00 A | 5 | 100% |  | 2018-11-02 08:00 | 2018-11-02 17:00 | 1d |  | Ruan; Ian | 9.75h | 9.75h | 140 | 140 | 140 |
| 7 | 1.1.1.4 | Revisar PTEC | 0.12d | 2018-11-06 08:00 A | 2018-11-06 09:00 A | 6 | 100% |  | 2018-11-05 08:00 | 2018-11-05 09:00 | 0.12d |  |  |  |  |  | 70 |  |
| 8 | 1.1.1.5 | Aprova PTEC | 1d | 2018-11-06 09:00 A | 2018-11-07 09:00 A | 7 | 100% |  | 2018-11-05 09:00 | 2018-11-06 09:00 | 1d |  |  |  |  |  | 50 |  |
| 9 | 1.1.2 | **Est. Prel. Tam** | 1.06d | 2018-11-07 09:00 A | 2018-11-08 09:30 A |  | 100% |  | 2018-11-06 09:00 | 2018-11-07 09:30 | 1.06d |  |  | 1h | 1h | 140 | 190 | 140 |
| 10 | 1.1.2.1 | Estimar Tamanho do Projeto | 0.06d | 2018-11-07 09:00 A | 2018-11-07 09:30 A | 8 | 100% |  | 2018-11-06 09:00 | 2018-11-06 09:30 | 0.06d |  | Victor; Vinicius | 1h | 1h | 140 | 140 | 140 |
| 11 | 1.1.2.2 | Revisar Estimativa de Tamanho do Projeto | 1d | 2018-11-07 09:30 A | 2018-11-08 09:30 A | 10 | 100% |  | 2018-11-06 09:30 | 2018-11-07 09:30 | 1d |  |  |  |  |  | 50 |  |
| 12 | 1.1.3 | **Est. Prel. Cronograma e Orçamentos** | 1.38d | 2018-11-08 09:30 A | 2018-11-09 13:30 A |  | 100% |  | 2018-11-07 09:30 | 2018-11-08 10:30 | 1.12d |  |  | 11h | 11h | 140 | 140 | 140 |
| 13 | 1.1.3.1 | Elaborar Cronograma e Orçamentos Preliminares | 1.25d | 2018-11-08 09:30 A | 2018-11-09 11:30 A | 11 | 100% |  | 2018-11-07 09:30 | 2018-11-08 09:30 | 1d |  | Victor | 10h | 10h | 70 | 70 | 70 |
| 14 | 1.1.3.2 | Revisão da Elaboração | 0.12d | 2018-11-09 11:30 A | 2018-11-09 13:30 A | 13 | 100% |  | 2018-11-08 09:30 | 2018-11-08 10:30 | 0.12d |  | Ruan | 1h | 1h | 70 | 70 | 70 |
| 15 | 1.2 | **Análise** | 8.19d | 2018-11-09 13:30 A | 2018-11-21 15:00 A |  | 100% |  | 2018-11-08 10:30 | 2018-11-26 08:30 | 11.75d |  |  | 10.8h | 10.8h | 630 | 750 | 630 |
| 16 | 1.2.1 | **Documento de Requisitos** | 0.46d | 2018-11-09 13:30 A | 2018-11-12 08:12 A |  | 100% |  | 2018-11-08 10:30 | 2018-11-16 09:00 | 5.81d |  |  | 4.8h | 4.8h | 490 | 610 | 490 |
| 17 | 1.2.1.1 | Reunião com o Cliente | 0.03d | 2018-11-09 13:30 A | 2018-11-09 13:42 A | 14 | 100% |  | 2018-11-08 10:30 | 2018-11-08 13:06 | 0.2d |  | Ian; Ruan; Victor; Vinicius | 0.8h | 0.8h | 280 | 350 | 280 |
| 18 | 1.2.1.2 | Elaborar DRE | 0.19d | 2018-11-09 13:42 A | 2018-11-09 15:12 A | 17 | 100% |  | 2018-11-14 08:00 | 2018-11-14 17:00 | 1d | start no earlier than 2018-11-09 08:00 | Ruan; Ian | 3h | 3h | 140 | 140 | 140 |
| 19 | 1.2.1.3 | Revisar DRE | 0.12d | 2018-11-09 15:12 A | 2018-11-09 16:12 A | 18 | 100% |  | 2018-11-15 08:00 | 2018-11-15 17:00 | 1d |  | Ian | 1h | 1h | 70 | 70 | 70 |
| 20 | 1.2.1.4 | Submeter DRE para Aprovação | 0.12d | 2018-11-09 16:12 A | 2018-11-12 08:12 A | 19 | 100% |  | 2018-11-16 08:00 | 2018-11-16 09:00 | 0.12d |  |  |  |  |  | 50 |  |
| 21 | 1.2.2 | **MRB** | 0.75d | 2018-11-21 08:00 A | 2018-11-21 15:00 A |  | 100% |  | 2018-11-21 08:00 | 2018-11-26 08:30 | 3.06d |  |  | 6h | 6h | 140 | 140 | 140 |
| 22 | 1.2.2.1 | Elaborar MRB | 0.62d | 2018-11-21 08:00 A | 2018-11-21 14:00 A | 20 | 100% |  | 2018-11-21 08:00 | 2018-11-22 17:00 | 2d | start no earlier than 2018-11-21 08:00 | Ian | 5h | 5h | 70 | 70 | 70 |
| 23 | 1.2.2.2 | Revisar MRB | 0.12d | 2018-11-21 14:00 A | 2018-11-21 15:00 A | 22 | 100% |  | 2018-11-23 08:00 | 2018-11-26 08:30 | 1.06d |  | Victor | 1h | 1h | 70 | 70 | 70 |
| 24 | 1.3 | **Planejamento do Projeto** | 5.5d | 2018-11-26 08:00 A | 2018-12-03 12:00 A |  | 100% |  | 2018-11-26 08:30 | 2018-12-04 12:00 | 6.44d |  |  | 33h | 33h | 490 | 350 | 490 |
| 25 | 1.3.1 | **Diagrama de Classes** | 0.62d | 2018-11-26 08:00 A | 2018-11-26 14:00 A |  | 100% |  | 2018-11-26 08:30 | 2018-11-29 13:30 | 3.5d |  |  | 5h | 5h | 210 | 210 | 210 |
| 26 | 1.3.1.1 | Elaborar Diagrama de Classes | 0.25d | 2018-11-26 08:00 A | 2018-11-26 10:00 A | 23 | 100% |  | 2018-11-26 08:30 | 2018-11-27 13:30 | 1.5d | start no earlier than 2018-11-26 08:00 | Ruan | 2h | 2h | 70 | 70 | 70 |
| 27 | 1.3.1.2 | Revisar Diagrama de Classes | 0.12d | 2018-11-26 10:00 A | 2018-11-26 11:00 A | 26 | 100% |  | 2018-11-27 13:30 | 2018-11-28 13:30 | 1d |  | Ruan | 1h | 1h | 70 | 70 | 70 |
| 28 | 1.3.1.3 | Atualizar MRB | 0.25d | 2018-11-26 11:00 A | 2018-11-26 14:00 A | 27 | 100% |  | 2018-11-28 13:30 | 2018-11-29 13:30 | 1d |  | Ruan | 2h | 2h | 70 | 70 | 70 |

| ID | WBS | Task | Duration | Start | Finish | Predecessors | Complete | Remaining | Baseline start | Baseline finish | Baseline duration | Total slack | Free slack | Constraint | Resources | Work | Actual work | Cost | Baseline cost | Actual cost |
| --- | --- | --- | --- | --- | --- | --- | --- | --- | --- | --- | --- | --- | --- | --- | --- | --- | --- | --- | --- | --- |
| 29 | 1.3.2 | **Modelo Entidade de Relacionamento** | 1.5d | 2018-11-30 08:00 A | 2018-12-03 12:00 A |  | 100% |  | 2018-11-30 08:00 | 2018-12-04 12:00 | 2.5d |  |  |  |  | 28h | 28h | 280 | 140 | 280 |
| 30 | 1.3.2.1 | Elaborar MER | 0.5d | 2018-11-30 08:00 A | 2018-11-30 12:00 A | 28 | 100% |  | 2018-11-30 08:00 | 2018-12-03 12:00 | 1.5d |  |  | start no earlier than 2018-11-30 08:00 | Ian | 4h | 4h | 70 | 70 | 70 |
| 31 | 1.3.2.2 | Revisar MER | 1d | 2018-11-30 13:00 A | 2018-12-03 12:00 A | 30 | 100% |  | 2018-12-03 13:00 | 2018-12-04 12:00 | 1d |  |  |  | Ian; Ruan; Victor | 24h | 24h | 210 | 70 | 210 |
| 32 | 1.4 | **Implementação** | 39.81d | 2018-12-03 13:00 A | 2019-01-28 10:30 |  | 19% | 32.33d | 2018-12-04 13:00 | 2019-02-26 12:00 | 60d | 13.88d |  |  |  | 227.5h | 35.9h | 3,430 | 4,200 | 1,260 |
| 33 | 1.4.1 | **[RFC01] Manter Associados** | 0.51d | 2018-12-03 13:00 A | 2018-12-04 08:06 A |  | 100% |  | 2018-12-04 13:00 | 2018-12-10 12:00 | 4d |  |  |  |  | 4.1h | 4.1h | 280 | 280 | 280 |
| 34 | 1.4.1.1 | [RFS01] Inserir Associado | 0.46d | 2018-12-03 13:00 A | 2018-12-03 16:42 A | 31 | 100% |  | 2018-12-04 13:00 | 2018-12-05 12:00 | 1d |  |  |  | Victor | 3.7h | 3.7h | 70 | 70 | 70 |
| 35 | 1.4.1.2 | [RFS02] Consultar Associado | 0.01d | 2018-12-03 16:42 A | 2018-12-03 16:48 A | 34 | 100% |  | 2018-12-05 13:00 | 2018-12-06 12:00 | 1d |  |  |  | Victor | 0.1h | 0.1h | 70 | 70 | 70 |
| 36 | 1.4.1.3 | [RFS03] Editar Associado | 0.01d | 2018-12-03 16:48 A | 2018-12-03 16:54 A | 35 | 100% |  | 2018-12-06 13:00 | 2018-12-07 12:00 | 1d |  |  |  | Victor | 0.1h | 0.1h | 70 | 70 | 70 |
| 37 | 1.4.1.4 | [RFS04] Excluir Associado | 0.03d | 2018-12-03 16:54 A | 2018-12-04 08:06 A | 36 | 100% |  | 2018-12-07 13:00 | 2018-12-10 12:00 | 1d |  |  |  | Victor | 0.2h | 0.2h | 70 | 70 | 70 |
| 38 | 1.4.2 | Teste RFC01 | 0.05d | 2018-12-04 08:06 A | 2018-12-04 08:30 A | 37 | 100% |  | 2018-12-10 13:00 | 2018-12-11 12:00 | 1d |  |  |  | Ruan | 0.4h | 0.4h | 70 | 70 | 70 |
| 39 | 1.4.3 | **[RFC02] Manter Empresas** | 0.07d | 2018-12-04 08:30 A | 2018-12-04 09:06 A |  | 100% |  | 2018-12-11 13:00 | 2018-12-17 12:00 | 4d |  |  |  |  | 0.6h | 0.6h | 280 | 280 | 280 |
| 40 | 1.4.3.1 | [RFS05] Inserir Empresas | 0.03d | 2018-12-04 08:30 A | 2018-12-04 08:42 A | 38 | 100% |  | 2018-12-11 13:00 | 2018-12-12 12:00 | 1d |  |  |  | Ruan | 0.2h | 0.2h | 70 | 70 | 70 |
| 41 | 1.4.3.2 | [RFS06] Consultar Empresa | 0.01d | 2018-12-04 08:42 A | 2018-12-04 08:48 A | 40 | 100% |  | 2018-12-12 13:00 | 2018-12-13 12:00 | 1d |  |  |  | Ruan | 0.1h | 0.1h | 70 | 70 | 70 |
| 42 | 1.4.3.3 | [RFS07] Editar Empresa | 0.01d | 2018-12-04 08:48 A | 2018-12-04 08:54 A | 41 | 100% |  | 2018-12-13 13:00 | 2018-12-14 12:00 | 1d |  |  |  | Ruan | 0.1h | 0.1h | 70 | 70 | 70 |
| 43 | 1.4.3.4 | [RFS08] Excluir Empresa | 0.03d | 2018-12-04 08:54 A | 2018-12-04 09:06 A | 42 | 100% |  | 2018-12-14 13:00 | 2018-12-17 12:00 | 1d |  |  |  | Ruan | 0.2h | 0.2h | 70 | 70 | 70 |
| 44 | 1.4.4 | Teste RFC02 | 0.05d | 2018-12-04 09:06 A | 2018-12-04 09:30 A | 43 | 100% |  | 2018-12-17 13:00 | 2018-12-18 12:00 | 1d |  |  |  | Vinicius | 0.4h | 0.4h | 70 | 70 | 70 |
| 45 | 1.4.5 | **[RFC03]Manter Material** | 4d | 2018-12-04 09:30 A | 2018-12-10 09:30 A |  | 100% |  | 2018-12-18 13:00 | 2018-12-24 12:00 | 4d |  |  |  |  | 8h | 8h | 280 | 280 | 280 |
| 46 | 1.4.5.1 | [RFS09] Inserir Material | 1d | 2018-12-04 09:30 A | 2018-12-05 09:30 A | 44 | 100% |  | 2018-12-18 13:00 | 2018-12-19 12:00 | 1d |  |  |  | Vinicius | 3h | 3h | 70 | 70 | 70 |
| 47 | 1.4.5.2 | [RFS10] Consultar Material | 1d | 2018-12-05 09:30 A | 2018-12-06 09:30 A | 46 | 100% |  | 2018-12-19 13:00 | 2018-12-20 12:00 | 1d |  |  |  | Vinicius | 2h | 2h | 70 | 70 | 70 |
| 48 | 1.4.5.3 | [RFS11] Alterar Material | 1d | 2018-12-06 09:30 A | 2018-12-07 09:30 A | 47 | 100% |  | 2018-12-20 13:00 | 2018-12-21 12:00 | 1d |  |  |  | Vinicius | 1.5h | 1.5h | 70 | 70 | 70 |
| 49 | 1.4.5.4 | [RFS12] Excluir Material | 1d | 2018-12-07 09:30 A | 2018-12-10 09:30 A | 48 | 100% |  | 2018-12-21 13:00 | 2018-12-24 12:00 | 1d |  |  |  | Vinicius | 1.5h | 1.5h | 70 | 70 | 70 |
| 50 | 1.4.6 | Teste RFC03 | 1d | 2018-12-10 09:30 | 2018-12-11 09:30 | 49 |  |  | 2018-12-24 13:00 | 2018-12-25 12:00 | 1d | 13.88d | 0d |  | Ian | 8h |  | 70 | 70 |  |
| 51 | 1.4.7 | **[RFC04] Manter Compra de Material** | 4d | 2018-12-11 09:30 A | 2018-12-17 09:30 |  | 35% | 2.6d | 2018-12-25 13:00 | 2018-12-31 12:00 | 4d | 43d |  |  |  | 32h | 11.2h | 280 | 280 | 140 |
| 52 | 1.4.7.1 | [RFS13] Inserir Compra | 1d | 2018-12-11 09:30 A | 2018-12-12 09:30 A | 50 | 100% |  | 2018-12-25 13:00 | 2018-12-26 12:00 | 1d |  |  |  | Ian | 8h | 8h | 70 | 70 | 70 |
| 53 | 1.4.7.2 | [RFS14] Consultar Compra | 1d | 2018-12-12 09:30 A | 2018-12-13 09:30 | 52 | 40% | 0.6d | 2018-12-26 13:00 | 2018-12-27 12:00 | 1d | 43d | 0d |  | Ian | 8h | 3.2h | 70 | 70 | 70 |
| 54 | 1.4.7.3 | [RFS15] Editar Compra | 1d | 2018-12-13 09:30 | 2018-12-14 09:30 | 53 |  |  | 2018-12-27 13:00 | 2018-12-28 12:00 | 1d | 43d | 0d |  | Ian | 8h |  | 70 | 70 |  |
| 55 | 1.4.7.4 | [RFS16] Excluir Compra | 1d | 2018-12-14 09:30 | 2018-12-17 09:30 | 54 |  |  | 2018-12-28 13:00 | 2018-12-31 12:00 | 1d | 43d | 0d |  | Ian | 8h |  | 70 | 70 |  |
| 56 | 1.4.8 | Teste RFC04 | 1d | 2018-12-17 09:30 | 2018-12-18 09:30 | 55 |  |  | 2018-12-31 13:00 | 2019-01-01 12:00 | 1d | 13.88d | 0d |  | Victor | 1h |  | 70 | 70 |  |

| ID | WBS | Task | Duration | Start | Finish | Predecessors | Complete | Remaining | Baseline start | Baseline finish | Baseline duration | Total slack | Free slack | Resources | Work | Actual work | Cost | Baseline cost | Actual cost |
| --- | --- | --- | --- | --- | --- | --- | --- | --- | --- | --- | --- | --- | --- | --- | --- | --- | --- | --- | --- |
| 57 | 1.4.9 | **[RFC05] Manter Venda de Material** | 4d | 2018-12-18 09:30 A | 2018-12-24 09:30 |  | 35% | 2.6d | 2019-01-01 13:00 | 2019-01-07 12:00 | 4d | 13.88d |  |  | 32h | 11.2h | 280 | 280 | 140 |
| 58 | 1.4.9.1 | [RFS17] Inserir Venda | 1d | 2018-12-18 09:30 A | 2018-12-19 09:30 A | 56 | 100% |  | 2019-01-01 13:00 | 2019-01-02 12:00 | 1d |  |  | Victor | 8h | 8h | 70 | 70 | 70 |
| 59 | 1.4.9.2 | [RFS18] Consultar Venda | 1d | 2018-12-19 09:30 A | 2018-12-20 09:30 | 58 | 40% | 0.6d | 2019-01-02 13:00 | 2019-01-03 12:00 | 1d | 13.88d | 0d | Victor | 8h | 3.2h | 70 | 70 | 70 |
| 60 | 1.4.9.3 | [RFS19] Editar Venda | 1d | 2018-12-20 09:30 | 2018-12-21 09:30 | 59 |  |  | 2019-01-03 13:00 | 2019-01-04 12:00 | 1d | 13.88d | 0d | Victor | 8h |  | 70 | 70 |  |
| 61 | 1.4.9.4 | [RFS20] Excluir Venda | 1d | 2018-12-21 09:30 | 2018-12-24 09:30 | 60 |  |  | 2019-01-04 13:00 | 2019-01-07 12:00 | 1d | 13.88d | 0d | Victor | 8h |  | 70 | 70 |  |
| 62 | 1.4.10 | Teste RFC05 | 1d | 2018-12-24 09:30 | 2018-12-25 09:30 | 61 |  |  | 2019-01-07 13:00 | 2019-01-08 12:00 | 1d | 13.88d | 0d | Ruan | 8h |  | 70 | 70 |  |
| 63 | 1.4.11 | **[RFC06] Manter Despesas** | 4d | 2018-12-25 09:30 | 2018-12-31 09:30 |  |  |  | 2019-01-08 13:00 | 2019-01-14 12:00 | 4d | 13.88d |  |  | 32h |  | 280 | 280 |  |
| 64 | 1.4.11.1 | [RFS21] Inserir Despesa | 1d | 2018-12-25 09:30 | 2018-12-26 09:30 | 62 |  |  | 2019-01-08 13:00 | 2019-01-09 12:00 | 1d | 13.88d | 0d | Ruan | 8h |  | 70 | 70 |  |
| 65 | 1.4.11.2 | [RFS22] Consultar Despesa | 1d | 2018-12-26 09:30 | 2018-12-27 09:30 | 64 |  |  | 2019-01-09 13:00 | 2019-01-10 12:00 | 1d | 13.88d | 0d | Ruan | 8h |  | 70 | 70 |  |
| 66 | 1.4.11.3 | [RFS23] Editar Despesa | 1d | 2018-12-27 09:30 | 2018-12-28 09:30 | 65 |  |  | 2019-01-10 13:00 | 2019-01-11 12:00 | 1d | 13.88d | 0d | Ruan | 8h |  | 70 | 70 |  |
| 67 | 1.4.11.4 | [RFS24] Excluir Despesa | 1d | 2018-12-28 09:30 | 2018-12-31 09:30 | 66 |  |  | 2019-01-11 13:00 | 2019-01-14 12:00 | 1d | 13.88d | 0d | Ruan | 8h |  | 70 | 70 |  |
| 68 | 1.4.12 | Teste RFC06 | 1d | 2018-12-31 09:30 | 2019-01-01 09:30 | 67 |  |  | 2019-01-14 13:00 | 2019-01-15 12:00 | 1d | 13.88d | 0d | Vinicius | 1h |  | 70 | 70 |  |
| 69 | 1.4.13 | **[RFC07]Manter Receita** | 4d | 2019-01-01 09:30 | 2019-01-07 09:30 |  |  |  | 2019-01-15 13:00 | 2019-01-21 12:00 | 4d | 13.88d |  |  | 8h |  | 280 | 280 |  |
| 70 | 1.4.13.1 | [RFS25] Inserir Receita | 1d | 2019-01-01 09:30 | 2019-01-02 09:30 | 68 |  |  | 2019-01-15 13:00 | 2019-01-16 12:00 | 1d | 13.88d | 0d | Vinicius | 3h |  | 70 | 70 |  |
| 71 | 1.4.13.2 | [RFS26] Consultar Receita | 1d | 2019-01-02 09:30 | 2019-01-03 09:30 | 70 |  |  | 2019-01-16 13:00 | 2019-01-17 12:00 | 1d | 13.88d | 0d | Vinicius | 2h |  | 70 | 70 |  |
| 72 | 1.4.13.3 | [RFS27] Editar Receita | 1d | 2019-01-03 09:30 | 2019-01-04 09:30 | 71 |  |  | 2019-01-17 13:00 | 2019-01-18 12:00 | 1d | 13.88d | 0d | Vinicius | 1.5h |  | 70 | 70 |  |
| 73 | 1.4.13.4 | [RFS28] Excluir Receita | 1d | 2019-01-04 09:30 | 2019-01-07 09:30 | 72 |  |  | 2019-01-18 13:00 | 2019-01-21 12:00 | 1d | 13.88d | 0d | Vinicius | 1.5h |  | 70 | 70 |  |
| 74 | 1.4.14 | Teste RFC07 | 1d | 2019-01-07 09:30 | 2019-01-08 09:30 | 73 |  |  | 2019-01-21 13:00 | 2019-01-22 12:00 | 1d | 13.88d | 0d | Ian | 8h |  | 70 | 70 |  |
| 75 | 1.4.15 | **[RFC08] Manter Usuários** | 4d | 2019-01-08 09:30 | 2019-01-14 09:30 |  |  |  | 2019-01-22 13:00 | 2019-01-28 12:00 | 4d | 13.88d |  |  | 32h |  | 280 | 280 |  |
| 76 | 1.4.15.1 | [RFS29] Inserir Usuário | 1d | 2019-01-08 09:30 | 2019-01-09 09:30 | 74 |  |  | 2019-01-22 13:00 | 2019-01-23 12:00 | 1d | 13.88d | 0d | Ian | 8h |  | 70 | 70 |  |
| 77 | 1.4.15.2 | [RFS30] Consultar Usuário | 1d | 2019-01-09 09:30 | 2019-01-10 09:30 | 76 |  |  | 2019-01-23 13:00 | 2019-01-24 12:00 | 1d | 13.88d | 0d | Ian | 8h |  | 70 | 70 |  |
| 78 | 1.4.15.3 | [RFS31] Alterar Usuário | 1d | 2019-01-10 09:30 | 2019-01-11 09:30 | 77 |  |  | 2019-01-24 13:00 | 2019-01-25 12:00 | 1d | 13.88d | 0d | Ian | 8h |  | 70 | 70 |  |
| 79 | 1.4.15.4 | [RFS32] Excluir Usuário | 1d | 2019-01-11 09:30 | 2019-01-14 09:30 | 78 |  |  | 2019-01-25 13:00 | 2019-01-28 12:00 | 1d | 13.88d | 0d | Ian | 8h |  | 70 | 70 |  |
| 80 | 1.4.16 | Teste RFC08 | 1d | 2019-01-14 09:30 | 2019-01-15 09:30 | 79 |  |  | 2019-01-28 13:00 | 2019-01-29 12:00 | 1d | 13.88d | 0d | Victor | 8h |  | 70 | 70 |  |

| ID | WBS | Task | Duration | Start | Finish | Predecessors | Complete | Remaining | Baseline start | Baseline finish | Baseline duration | Total slack | Free slack | Resources | Work | Cost | Baseline cost |
| --- | --- | --- | --- | --- | --- | --- | --- | --- | --- | --- | --- | --- | --- | --- | --- | --- | --- |
| 81 | 1.4.17 | **[RFS33] Emitir Relatório Bolsa Catador** | 2d | 2019-01-15 09:30 | 2019-01-17 09:30 |  |  |  | 2019-01-29 13:00 | 2019-01-31 12:00 | 2d | 13.88d |  |  | 8.5h | 140 | 140 |
| 82 | 1.4.17.1 | [RFS33]Emitir Relatório Bolsa Catador | 1d | 2019-01-15 09:30 | 2019-01-16 09:30 | 80 |  |  | 2019-01-29 13:00 | 2019-01-30 12:00 | 1d | 13.88d | 0d | Vinicius | 7h | 70 | 70 |
| 83 | 1.4.17.2 | Teste RFS33 | 1d | 2019-01-16 09:30 | 2019-01-17 09:30 | 82 |  |  | 2019-01-30 13:00 | 2019-01-31 12:00 | 1d | 13.88d | 0d | Victor | 1.5h | 70 | 70 |
| 84 | 1.4.18 | **[RFS34] Emitir Relatório de Estoque** | 2d | 2019-01-17 09:30 | 2019-01-21 09:30 |  |  |  | 2019-01-31 13:00 | 2019-02-04 12:00 | 2d | 13.88d |  |  | 1.5h | 70 | 140 |
| 85 | 1.4.18.1 | [RFS34]Emitir Relatório de Estoque | 1d | 2019-01-17 09:30 | 2019-01-18 09:30 | 83 |  |  | 2019-01-31 13:00 | 2019-02-01 12:00 | 1d | 13.88d | 0d |  |  |  | 70 |
| 86 | 1.4.18.2 | Teste RFS34 | 1d | 2019-01-18 09:30 | 2019-01-21 09:30 | 85 |  |  | 2019-02-01 13:00 | 2019-02-04 12:00 | 1d | 13.88d | 0d | Ruan | 1.5h | 70 | 70 |
| 87 | 1.4.19 | **[RNF01] Backup Periódico** | 2d | 2019-01-21 09:30 | 2019-01-23 09:30 |  |  |  | 2019-02-04 13:00 | 2019-02-06 12:00 | 2d | 13.88d |  |  | 9h | 140 | 140 |
| 88 | 1.4.19.1 | [RNF01] Backup Periódico | 1d | 2019-01-21 09:30 | 2019-01-22 09:30 | 86 |  |  | 2019-02-04 13:00 | 2019-02-05 12:00 | 1d | 13.88d | 0d | Ruan | 8h | 70 | 70 |
| 89 | 1.4.19.2 | Teste RNF01 | 1d | 2019-01-22 09:30 | 2019-01-23 09:30 | 88 |  |  | 2019-02-05 13:00 | 2019-02-06 12:00 | 1d | 13.88d | 0d | Ian | 1h | 70 | 70 |
| 90 | 1.4.20 | **[RNF02] Interface Facilitada** | 1.12d | 2019-01-23 09:30 | 2019-01-24 10:30 |  |  |  | 2019-02-06 13:00 | 2019-02-08 12:00 | 2d | 13.88d |  |  | 9h | 140 | 140 |
| 91 | 1.4.20.1 | [RNF02] Interface Facilitada | 1d | 2019-01-23 09:30 | 2019-01-24 09:30 | 89 |  |  | 2019-02-06 13:00 | 2019-02-07 12:00 | 1d | 13.88d | 0d | Victor | 8h | 70 | 70 |
| 92 | 1.4.20.2 | Teste RNF02 | 0.12d | 2019-01-24 09:30 | 2019-01-24 10:30 | 91 |  |  | 2019-02-07 13:00 | 2019-02-08 12:00 | 1d | 13.88d | 0d | Victor | 1h | 70 | 70 |
| 93 | 1.4.21 | **[RNF03] Otimização de Desempenho** | 2d | 2019-01-24 10:30 | 2019-01-28 10:30 |  |  |  | 2019-02-08 13:00 | 2019-02-12 12:00 | 2d | 13.88d |  |  | 16h | 140 | 140 |
| 94 | 1.4.21.1 | [RNF03] Otimização de Desempenho | 1d | 2019-01-24 10:30 | 2019-01-25 10:30 | 92 |  |  | 2019-02-08 13:00 | 2019-02-11 12:00 | 1d | 13.88d | 0d | Ruan | 8h | 70 | 70 |
| 95 | 1.4.21.2 | Teste RNF03 | 1d | 2019-01-25 10:30 | 2019-01-28 10:30 | 94 |  |  | 2019-02-11 13:00 | 2019-02-12 12:00 | 1d | 13.88d |  | Ruan | 8h | 70 | 70 |
| 96 | 1.5 | **Monitoramento e Controle** | 72d | 2018-11-07 08:00 A | 2019-02-14 17:00 |  | 33% | 48d | 2018-12-04 13:00 | 2019-02-28 12:00 | 62d |  |  |  | 19.83h | 350 | 520 |
| 97 | 1.5.1 | Acompanhar Projeto | 1d | 2018-12-03 13:00 A | 2018-12-04 12:00 A | 31 | 100% |  | 2018-12-04 13:00 | 2018-12-05 12:00 | 1d |  |  |  |  |  | 50 |
| 98 | 1.5.2 | **Gerência de Configuração** | 2d | 2018-11-07 08:00 | 2018-11-08 17:00 |  |  |  | 2019-02-26 13:00 | 2019-02-28 12:00 | 2d | 70.19d |  |  | 19.83h | 350 | 470 |
| 99 | 1.5.2.1 | Elaborar Branch | 1d | 2018-11-07 08:00 | 2018-11-07 17:00 |  |  |  | 2019-02-26 13:00 | 2019-02-27 12:00 | 1d | 70.19d | 0d | Ian; Ruan; Victor; Vinicius | 19.33h | 280 | 400 |
| 100 | 1.5.2.2 | Realizar Merge da Branch para a Trunk | 1d | 2018-11-08 08:00 | 2018-11-08 17:00 | 99 |  |  | 2019-02-27 13:00 | 2019-02-28 12:00 | 1d | 70.19d |  | Ian | 0.5h | 70 | 70 |
